# 安国路井管线工期

Schedule from MS Project, 2026-01-01 to 2039-02-07.
11111

## Calendars

- 标准: Mon-Sun 08:00-12:00, 13:00-17:00.

## Resources

| Resource |
| --- |
| 包括2015年春节休假 |
| 春节休假 |

## Schedule

| ID | WBS | Task | Type | Duration | Start | Finish | Predecessors | Total slack | Free slack | Constraint | 工程量 |
| --- | --- | --- | --- | --- | --- | --- | --- | --- | --- | --- | --- |
| 1 | 1 | **南北通道浦西段和越江段新建工程2标工期计划** |  | 4786d? | 2026-01-01 | 2039-02-07 |  | 0d |  |  |  |
| 2 | 1.1 | ★ 正式开工 | milestone | 0d | 2026-01-02 | 2026-01-02 |  | 2762d | 0d | start no earlier than 2026-01-02 |  |
| 3 | 1.2 | 施工准备（含清障、三通一平、新建围挡等） |  | 72d | 2026-01-02 | 2026-03-14 | 2 | 2762d | 0d |  |  |
| 4 | 1.3 | **四平路井及1区** |  | 4179d? | 2027-08-31 | 2039-02-07 |  |  |  |  |  |
| 5 | 1.3.1 | **西侧围护及加固** |  | 200d | 2027-08-31 | 2028-03-17 |  | 3979d |  |  |  |
| 6 | 1.3.1.1 | 新增任务2 |  | 5d | 2027-08-31 | 2027-09-04 | 11 | 4174d |  | start no earlier than 2027-08-09 |  |
| 7 | 1.3.1.2 | 四轴槽壁加固（123根，16m~26.2m） |  | 30d | 2027-08-31 | 2027-09-29 | 3 | 3979d | 0d | start no earlier than 2024-01-14 | 123 |
| 8 | 1.3.1.3 | TRD截水帷幕（47.64延米） |  | 22d | 2027-09-20 | 2027-10-11 | 7SS+20d | 3979d | 0d | start no earlier than 2025-12-31 | 47.64 |
| 9 | 1.3.1.4 | 东侧围挡外移及地墙施工准备 |  | 15d | 2027-10-12 | 2027-10-26 | 8 | 3979d | 0d |  |  |
| 10 | 1.3.1.5 | 西侧地墙（26幅） |  | 80d | 2027-10-27 | 2028-01-14 | 9 | 3979d | 0d |  | 26 |
| 11 | 1.3.1.6 | 钻孔桩施工（16根，桩长40m） |  | 20d | 2028-01-15 | 2028-02-03 | 10 | 3979d | 0d |  | 16 |
| 12 | 1.3.1.7 | N-JET（止水帷幕、挡土墙、墙缝止水） |  | 20d | 2028-02-04 | 2028-02-23 | 11, 6 | 3979d | 0d |  |  |
| 13 | 1.3.1.8 | RJP墙缝止水（16根） |  | 23d | 2028-02-24 | 2028-03-17 | 12 | 3979d |  | finish no earlier than 2026-10-31 | 16 |
| 14 | 1.3.1.9 | 施工准备-新增 |  | 20d | 2027-08-31 | 2027-09-19 |  | 4159d |  |  |  |
| 15 | 1.3.2 | 曲阳南路管线搬迁（含春节） |  | 180d | 2027-01-02 | 2027-06-30 |  | 3652d | 61d | finish no earlier than 2027-06-30 |  |
| 16 | 1.3.3 | **剩余围护及加固** |  | 251d | 2027-08-31 | 2028-05-07 |  | 3591d |  |  |  |
| 17 | 1.3.3.1 | 四轴槽壁加固（155根，桩长16m~26.2m） |  | 30d | 2027-08-31 | 2027-09-29 | 15 | 3591d | 0d |  |  |
| 18 | 1.3.3.2 | TRD截水帷幕（55.26延米） |  | 20d | 2027-09-15 | 2027-10-04 | 17SS+15d | 3591d | 0d |  |  |
| 19 | 1.3.3.3 | 地墙设备进场及施工准备 |  | 20d | 2027-09-30 | 2027-10-19 | 18SS+15d | 3591d | 0d |  |  |
| 20 | 1.3.3.4 | 地下连续墙施工（33幅） |  | 80d | 2027-10-20 | 2028-01-07 | 19 | 3591d | 0d |  |  |
| 21 | 1.3.3.5 | 钻孔桩施工（62根，桩长40m） |  | 20d | 2028-01-08 | 2028-01-27 | 20 | 4029d |  |  |  |
| 22 | 1.3.3.6 | 四轴坑内加固（17069方） |  | 30d | 2028-01-08 | 2028-02-06 | 20 | 3591d | 0d |  |  |
| 23 | 1.3.3.7 | 高压旋喷嵌缝（471根） |  | 28d | 2028-01-28 | 2028-02-24 | 22SS+20d | 3591d | 0d |  |  |
| 24 | 1.3.3.8 | N-JET（止水帷幕、挡土墙、墙缝止水） |  | 20d | 2028-02-25 | 2028-03-15 | 23 | 3591d | 0d |  |  |
| 25 | 1.3.3.9 | RJP墙缝止水（22根） |  | 20d | 2028-02-25 | 2028-03-15 | 24FF | 3591d | 0d |  |  |
| 26 | 1.3.3.10 | 降水井打设（30口） |  | 10d | 2028-03-11 | 2028-03-20 | 25FF+5d | 3591d | 0d |  |  |
| 27 | 1.3.3.11 | 首层土方及第一道混凝土支撑（首层土1458方） |  | 30d | 2028-03-21 | 2028-04-19 | 26 | 3591d | 0d |  |  |
| 28 | 1.3.3.12 | 覆罩法大棚施工 |  | 28d | 2028-04-10 | 2028-05-07 | 27SS+20d | 3591d | 0d |  |  |

| ID | WBS | Task | Duration | Start | Finish | Predecessors | Total slack | Free slack |
| --- | --- | --- | --- | --- | --- | --- | --- | --- |
| 29 | 1.3.4 | **基坑开挖施工** | 162d | 2028-05-08 | 2028-10-16 |  | 3591d |  |
| 30 | 1.3.4.1 | 1区第二层土方开挖（方） | 20d | 2028-05-08 | 2028-05-27 | 28 | 3591d | 0d |
| 31 | 1.3.4.2 | 1区第二道混凝土支撑（含养护）方 | 25d | 2028-05-09 | 2028-06-02 | 30SS+1d | 3591d | 0d |
| 32 | 1.3.4.3 | 工作井第二层土方开挖（方） | 3d | 2028-05-24 | 2028-05-26 | 31SS+15d | 3591d | 0d |
| 33 | 1.3.4.4 | 工作井第二道混凝土支撑（含养护）方 | 15d | 2028-05-27 | 2028-06-10 | 32 | 3591d | 0d |
| 34 | 1.3.4.5 | 1区第三层土方开挖（方） | 18d | 2028-06-11 | 2028-06-28 | 33 | 3591d | 0d |
| 35 | 1.3.4.6 | 1区第三道混凝土支撑（含养护）方 | 25d | 2028-06-13 | 2028-07-07 | 34SS+2d | 3591d | 0d |
| 36 | 1.3.4.7 | 工作井第三层土方开挖（方），1区第四层土方开挖（方）（高差0.7） | 25d | 2028-06-28 | 2028-07-22 | 35SS+15d | 3591d | 0d |
| 37 | 1.3.4.8 | 工作井第三道支撑（方），1区第四道支撑施工（方） | 30d | 2028-07-01 | 2028-07-30 | 36SS+3d | 3591d | 0d |
| 38 | 1.3.4.9 | 工作井第四层土方开挖（方），1区第五层土方开挖（方）（高差0.3） | 25d | 2028-07-16 | 2028-08-09 | 37SS+15d | 3591d | 0d |
| 39 | 1.3.4.10 | 工作井第四道支撑（方），1区第五道支撑施工（方） | 30d | 2028-07-19 | 2028-08-17 | 38SS+3d | 3591d | 0d |
| 40 | 1.3.4.11 | 工作井第五层土方开挖（方），1区第六层土方开挖（方）（高差0.5） | 25d | 2028-08-03 | 2028-08-27 | 39SS+15d | 3591d | 0d |
| 41 | 1.3.4.12 | 工作井第五道支撑（方），1区第六道支撑施工（方） | 30d | 2028-08-07 | 2028-09-05 | 40SS+4d | 3591d | 0d |
| 42 | 1.3.4.13 | 工作井第六层土方开挖（方），1区第七层土方开挖（方）（高差0.33） | 25d | 2028-08-22 | 2028-09-15 | 41SS+15d | 3591d | 0d |
| 43 | 1.3.4.14 | 工作井第六道支撑（方），1区第七道支撑施工（方） | 30d | 2028-08-26 | 2028-09-24 | 42SS+4d | 3591d | 0d |
| 44 | 1.3.4.15 | 工作井第七层土方开挖（方），1区第八层土方开挖（方）（高差0.3） | 25d | 2028-09-10 | 2028-10-04 | 43SS+15d | 3591d | 0d |
| 45 | 1.3.4.16 | 工作井第七道支撑（方），1区垫层及底板施工 | 30d | 2028-09-14 | 2028-10-13 | 44SS+4d | 3591d | 0d |
| 46 | 1.3.4.17 | 工作井第八层土方开挖（方） | 10d | 2028-09-29 | 2028-10-08 | 45SS+15d | 3591d | 0d |
| 47 | 1.3.4.18 | 工作井垫层及防水施工 | 3d | 2028-10-09 | 2028-10-11 | 46 | 3591d | 0d |
| 48 | 1.3.4.19 | 工作井结构底板施工 | 5d | 2028-10-12 | 2028-10-16 | 47 | 3591d | 0d |
| 49 | 1.3.5 | **结构回筑** | 175d | 2028-10-17 | 2029-04-09 |  | 3591d |  |
| 50 | 1.3.5.1 | **四平路井** | 135d | 2028-10-17 | 2029-02-28 |  | 3591d |  |
| 51 | 1.3.5.1.1 | 养护及拆除第七道撑 | 15d | 2028-10-17 | 2028-10-31 | 48 | 3591d | 0d |
| 52 | 1.3.5.1.2 | 施工内衬墙至第六道支撑底 | 15d | 2028-11-01 | 2028-11-15 | 51 | 3591d | 0d |
| 53 | 1.3.5.1.3 | 施工内衬墙至第五道支撑底 | 15d | 2028-11-16 | 2028-11-30 | 52 | 3636d | 5d |
| 54 | 1.3.5.1.4 | 施工内衬墙至第四道支撑底 | 15d | 2028-12-06 | 2028-12-20 | 53, 62 | 3631d | 0d |
| 55 | 1.3.5.1.5 | 施工内衬墙至第三道支撑底 | 15d | 2028-12-21 | 2029-01-04 | 54 | 3631d | 0d |
| 56 | 1.3.5.1.6 | 拆除第三道撑 | 5d | 2029-01-05 | 2029-01-09 | 55 | 3631d | 0d |
| 57 | 1.3.5.1.7 | 拆除第二道撑 | 5d | 2029-01-10 | 2029-01-14 | 56 | 3631d | 0d |
| 58 | 1.3.5.1.8 | 施工内衬墙至顶板框架（含养护） | 25d | 2029-01-15 | 2029-02-08 | 57 | 3631d | 0d |
| 59 | 1.3.5.1.9 | 自下而上拆除第六、五、四、一道支撑 | 20d | 2029-02-09 | 2029-02-28 | 58 | 3631d |  |

| ID | WBS | Task | Duration | Start | Finish | Predecessors | Total slack | Free slack |
| --- | --- | --- | --- | --- | --- | --- | --- | --- |
| 60 | 1.3.5.2 | **1区（1-1结构段）** | 145d | 2028-11-16 | 2029-04-09 |  | 3591d |  |
| 61 | 1.3.5.2.1 | 拆除第七道撑 | 5d | 2028-11-16 | 2028-11-20 | 52 | 3591d | 0d |
| 62 | 1.3.5.2.2 | 施工内衬墙至第六道支撑底 | 15d | 2028-11-21 | 2028-12-05 | 61 | 3591d | 0d |
| 63 | 1.3.5.2.3 | 施工内衬墙至第五道支撑底 | 15d | 2028-12-06 | 2028-12-20 | 62 | 3591d | 0d |
| 64 | 1.3.5.2.4 | 施工内衬墙至第四道支撑底 | 15d | 2028-12-21 | 2029-01-04 | 63 | 3591d | 0d |
| 65 | 1.3.5.2.5 | 拆除第四道撑 | 5d | 2029-01-05 | 2029-01-09 | 64 | 3591d | 0d |
| 66 | 1.3.5.2.6 | 施工夹层板及上腋板 | 20d | 2029-01-10 | 2029-01-29 | 65 | 3591d | 0d |
| 67 | 1.3.5.2.7 | 拆除第三道撑 | 5d | 2029-01-30 | 2029-02-03 | 66 | 3591d | 0d |
| 68 | 1.3.5.2.8 | 施工内衬墙及B1板（含养护） | 22d | 2029-02-04 | 2029-02-25 | 67 | 3591d | 0d |
| 69 | 1.3.5.2.9 | 自下而上拆除第六、五、二道支撑 | 15d | 2029-02-26 | 2029-03-12 | 68 | 3591d | 0d |
| 70 | 1.3.5.2.10 | 施工内衬墙及顶板（含养护) | 20d | 2029-03-13 | 2029-04-01 | 69 | 3591d | 0d |
| 71 | 1.3.5.2.11 | 洞口挡土墙施工及养护 | 8d | 2029-04-02 | 2029-04-09 | 70 | 3591d |  |
| 72 | 1.3.5.3 | **1区（2-2结构段）** | 138d | 2028-11-16 | 2029-04-02 |  | 3598d |  |
| 73 | 1.3.5.3.1 | 拆除第七道支撑（机架段） | 3d | 2028-11-16 | 2028-11-18 | 52 | 3598d | 0d |
| 74 | 1.3.5.3.2 | 施工内衬墙至第六道支撑底（机架段） | 10d | 2028-11-19 | 2028-11-28 | 73 | 3598d | 0d |
| 75 | 1.3.5.3.3 | 施工内衬墙至第五道支撑底 | 15d | 2028-11-29 | 2028-12-13 | 74 | 3598d | 0d |
| 76 | 1.3.5.3.4 | 施工内衬墙至第四道支撑底 | 15d | 2028-12-14 | 2028-12-28 | 75 | 3598d | 0d |
| 77 | 1.3.5.3.5 | 拆除第四道撑 | 5d | 2028-12-29 | 2029-01-02 | 76 | 3598d | 0d |
| 78 | 1.3.5.3.6 | 施工夹层板及上腋板 | 20d | 2029-01-03 | 2029-01-22 | 77 | 3598d | 0d |
| 79 | 1.3.5.3.7 | 拆除第三道撑 | 5d | 2029-01-23 | 2029-01-27 | 78 | 3598d | 0d |
| 80 | 1.3.5.3.8 | 施工内衬墙及B1板（含养护） | 20d | 2029-01-28 | 2029-02-16 | 79 | 3598d | 0d |
| 81 | 1.3.5.3.9 | 自下而上拆除第六、五、二道支撑 | 15d | 2029-02-17 | 2029-03-03 | 80 | 3598d | 0d |
| 82 | 1.3.5.3.10 | 施工内衬墙及顶板（含养护) | 20d | 2029-03-04 | 2029-03-23 | 81 | 3598d | 0d |
| 83 | 1.3.5.3.11 | 洞口挡土墙施工及养护 | 10d | 2029-03-24 | 2029-04-02 | 82 | 3598d |  |

| ID | WBS | Task | Duration | Start | Finish | Predecessors | Total slack | Free slack | Constraint |
| --- | --- | --- | --- | --- | --- | --- | --- | --- | --- |
| 84 | 1.3.5.4 | **1区（3-3结构段）** | 145d | 2028-11-16 | 2029-04-09 |  | 3591d |  |  |
| 85 | 1.3.5.4.1 | 拆除第六道支撑 | 5d | 2028-11-16 | 2028-11-20 | 61SS | 3591d | 0d |  |
| 86 | 1.3.5.4.2 | 施工内衬墙至第五道支撑底 | 15d | 2028-11-21 | 2028-12-05 | 85 | 3591d | 0d |  |
| 87 | 1.3.5.4.3 | 施工内衬墙至第四道支撑底 | 15d | 2028-12-06 | 2028-12-20 | 86 | 3591d | 0d |  |
| 88 | 1.3.5.4.4 | 拆除第四道撑 | 5d | 2028-12-21 | 2028-12-25 | 87 | 3591d | 0d |  |
| 89 | 1.3.5.4.5 | 施工夹层板及上腋板 | 20d | 2028-12-26 | 2029-01-14 | 88 | 3591d | 0d |  |
| 90 | 1.3.5.4.6 | 拆除第三道撑 | 5d | 2029-01-15 | 2029-01-19 | 89 | 3591d | 0d |  |
| 91 | 1.3.5.4.7 | 施工内衬墙及B1板（含养护） | 20d | 2029-01-20 | 2029-02-08 | 90 | 3591d | 0d |  |
| 92 | 1.3.5.4.8 | 自下而上拆除第六、五、二道支撑 | 15d | 2029-02-09 | 2029-02-23 | 91 | 3591d | 0d |  |
| 93 | 1.3.5.4.9 | 施工内衬墙及顶板（含养护) | 20d | 2029-02-24 | 2029-03-15 | 92 | 3591d | 0d |  |
| 94 | 1.3.5.4.10 | 洞口挡土墙施工及养护 | 10d | 2029-03-16 | 2029-03-25 | 93 | 3591d | 0d |  |
| 95 | 1.3.5.4.11 | 顶板防水 | 5d | 2029-03-26 | 2029-03-30 | 94 | 3591d | 0d |  |
| 96 | 1.3.5.4.12 | 回填及拆首道撑 | 10d | 2029-03-31 | 2029-04-09 | 95 | 3591d |  |  |
| 97 | 1.4 | 天虹路南侧腾地及证照办理 | 150d | 2026-01-02 | 2026-05-31 |  | 3194d | 61d | start no earlier than 2026-01-02 |
| 98 | 1.5 | **小分区（外挂排箱涵）施工** | 122d | 2026-08-01 | 2026-11-30 |  | 3133d |  |  |
| 99 | 1.5.1 | 排摸及清障施工 | 30d | 2026-08-01 | 2026-08-30 | 97 | 3133d | 0d | start no earlier than 2026-08-01 |
| 100 | 1.5.2 | **围护结构施工** | 35d | 2026-08-31 | 2026-10-04 |  | 3133d |  |  |
| 101 | 1.5.2.1 | 围护桩（80根） | 20d | 2026-08-31 | 2026-09-19 | 99 | 3133d | 0d |  |
| 102 | 1.5.2.2 | 高压旋喷填缝（12根） | 15d | 2026-09-20 | 2026-10-04 | 101 | 3133d | 0d |  |
| 103 | 1.5.3 | **基坑开挖施工** | 10d | 2026-11-02 | 2026-11-11 |  | 3133d |  |  |
| 104 | 1.5.3.1 | 小分区基坑开挖 | 10d | 2026-11-02 | 2026-11-11 | 102FS+28d | 3133d | 0d |  |
| 105 | 1.5.4 | **结构回筑** | 19d | 2026-11-12 | 2026-11-30 |  | 3133d |  |  |
| 106 | 1.5.4.1 | 小分区结构回筑 | 19d | 2026-11-12 | 2026-11-30 | 104 | 3133d | 0d |  |
| 107 | 1.6 | 曲阳南路雨水、合杆等管线搬迁 | 150d | 2026-12-01 | 2027-04-29 | 106 | 3133d | 0d | start no earlier than 2026-06-01 |

| ID | WBS | Task | Duration | Start | Finish | Predecessors | Total slack | Free slack |
| --- | --- | --- | --- | --- | --- | --- | --- | --- |
| 108 | 1.7 | **3~5区施工** | 1169d | 2027-04-30 | 2030-07-11 |  | 3133d |  |
| 109 | 1.7.1 | **西侧地墙施工** | 90d | 2027-04-30 | 2027-07-28 |  | 3133d | 0d |
| 110 | 1.7.1.1 | 排摸及清障施工 | 7d | 2027-04-30 | 2027-05-06 | 107 | 3133d | 0d |
| 111 | 1.7.1.2 | 槽壁加固施工 | 20d | 2027-05-07 | 2027-05-26 | 110 | 3133d | 0d |
| 112 | 1.7.1.3 | 地墙设备进场及施工准备 | 10d | 2027-05-27 | 2027-06-05 | 111 | 3133d | 0d |
| 113 | 1.7.1.4 | 地下连续墙施工（38幅） | 40d | 2027-06-06 | 2027-07-15 | 112 | 3133d | 0d |
| 114 | 1.7.1.5 | 墙缝止水施工（48根） | 13d | 2027-07-16 | 2027-07-28 | 113 | 3133d |  |
| 115 | 1.7.2 | 曲阳南路管线搬迁至西侧5区 | 92d | 2027-07-29 | 2027-10-28 | 109 | 3133d | 0d |
| 116 | 1.7.3 | **剩余围护施工** | 197d | 2027-10-29 | 2028-05-12 | 115 | 3133d | 0d |
| 117 | 1.7.3.1 | 清障126孔 | 10d | 2027-10-29 | 2027-11-07 | 115 | 3133d | 0d |
| 118 | 1.7.3.2 | 槽壁加固 | 25d | 2027-11-05 | 2027-11-29 | 117SS+7d | 3133d | 0d |
| 119 | 1.7.3.3 | 地墙设备进场及施工准备 | 15d | 2027-11-20 | 2027-12-04 | 118SS+15d | 3133d | 0d |
| 120 | 1.7.3.4 | 地下连续墙施工（58幅） | 90d | 2027-12-05 | 2028-03-03 | 119 | 3133d | 0d |
| 121 | 1.7.3.5 | 墙缝止水施工（15根） | 25d | 2028-02-18 | 2028-03-13 | 120FF+10d | 3133d | 0d |
| 122 | 1.7.3.6 | 坑内加固施工 | 21d | 2028-03-09 | 2028-03-29 | 121SS+20d | 3133d | 0d |
| 123 | 1.7.3.7 | 高压旋喷桩嵌缝 | 15d | 2028-03-24 | 2028-04-07 | 122SS+15d | 3133d | 0d |
| 124 | 1.7.3.8 | 钻孔桩施工（18根） | 12d | 2028-04-03 | 2028-04-14 | 123SS+10d | 3133d | 0d |
| 125 | 1.7.3.9 | 降水井打设（8口） | 15d | 2028-04-08 | 2028-04-22 | 124SS+5d | 3153d |  |
| 126 | 1.7.3.10 | 首层土方及第一道混凝土支撑（3042m³） | 28d | 2028-04-15 | 2028-05-12 | 124 | 3133d |  |
| 127 | 1.7.4 | **3-1区施工** | 199d | 2028-05-13 | 2028-11-27 |  | 3133d | 0d |
| 128 | 1.7.4.1 | **基坑开挖施工** | 111d | 2028-05-13 | 2028-08-31 |  | 3133d |  |
| 129 | 1.7.4.1.1 | 第二层土方开挖 | 3d | 2028-05-13 | 2028-05-15 | 116 | 3133d | 0d |
| 130 | 1.7.4.1.2 | 第二道混凝土支撑（含养护） | 15d | 2028-05-16 | 2028-05-30 | 129 | 3133d | 0d |
| 131 | 1.7.4.1.3 | 第三层土方开挖挖 | 3d | 2028-05-31 | 2028-06-02 | 130 | 3133d | 0d |
| 132 | 1.7.4.1.4 | 第三道混凝土支撑（含养护） | 15d | 2028-06-03 | 2028-06-17 | 131 | 3133d | 0d |
| 133 | 1.7.4.1.5 | 第四层土方开挖 | 4d | 2028-06-18 | 2028-06-21 | 132 | 3133d | 0d |
| 134 | 1.7.4.1.6 | 第四道混凝土支撑（含养护） | 15d | 2028-06-22 | 2028-07-06 | 133 | 3133d | 0d |
| 135 | 1.7.4.1.7 | 第五层土方开挖 | 5d | 2028-07-07 | 2028-07-11 | 134 | 3133d | 0d |
| 136 | 1.7.4.1.8 | 第五道混凝土支撑（含养护） | 15d | 2028-07-12 | 2028-07-26 | 135 | 3133d | 0d |
| 137 | 1.7.4.1.9 | 第六层土方开挖 | 6d | 2028-07-27 | 2028-08-01 | 136 | 3133d | 0d |
| 138 | 1.7.4.1.10 | 第六道混凝土支撑（含养护） | 15d | 2028-08-02 | 2028-08-16 | 137 | 3133d | 0d |
| 139 | 1.7.4.1.11 | 第七层土方开挖 | 7d | 2028-08-17 | 2028-08-23 | 138 | 3133d | 0d |
| 140 | 1.7.4.1.12 | 垫层及防水施工 | 3d | 2028-08-24 | 2028-08-26 | 139 | 3133d | 0d |
| 141 | 1.7.4.1.13 | 底板混凝土浇筑 | 5d | 2028-08-27 | 2028-08-31 | 140 | 3133d | 0d |

| ID | WBS | Task | Duration | Start | Finish | Predecessors | Total slack | Free slack |
| --- | --- | --- | --- | --- | --- | --- | --- | --- |
| 142 | 1.7.4.2 | **结构回筑** | 88d | 2028-09-01 | 2028-11-27 |  | 3133d |  |
| 143 | 1.7.4.2.1 | 底板养护及拆除第六道支撑 | 7d | 2028-09-01 | 2028-09-07 | 141 | 3133d | 0d |
| 144 | 1.7.4.2.2 | 施工内衬墙至第五道支撑底（含养护） | 12d | 2028-09-08 | 2028-09-19 | 143 | 3133d | 0d |
| 145 | 1.7.4.2.3 | 拆除第五道支撑 | 3d | 2028-09-20 | 2028-09-22 | 144 | 3133d | 0d |
| 146 | 1.7.4.2.4 | 施工B3板（含养护） | 12d | 2028-09-23 | 2028-10-04 | 145 | 3133d | 0d |
| 147 | 1.7.4.2.5 | 拆除第四道支撑 | 3d | 2028-10-05 | 2028-10-07 | 146 | 3133d | 0d |
| 148 | 1.7.4.2.6 | 施工内衬墙及B2板（含养护） | 15d | 2028-10-08 | 2028-10-22 | 147 | 3133d | 0d |
| 149 | 1.7.4.2.7 | 拆除第三道支撑 | 3d | 2028-10-23 | 2028-10-25 | 148 | 3133d | 0d |
| 150 | 1.7.4.2.8 | 施工内衬墙及B1板（含养护） | 15d | 2028-10-26 | 2028-11-09 | 149 | 3133d | 0d |
| 151 | 1.7.4.2.9 | 拆除第二道支撑 | 3d | 2028-11-10 | 2028-11-12 | 150 | 3133d | 0d |
| 152 | 1.7.4.2.10 | 施工内衬墙及顶板（含养护） | 15d | 2028-11-13 | 2028-11-27 | 151 | 3133d |  |
| 153 | 1.7.5 | 曲阳南路管线搬迁至3-1区（含顶管施工） | 90d | 2028-11-28 | 2029-02-25 | 127 | 3133d | 0d |
| 154 | 1.7.6 | **4区施工** | 217d | 2028-05-13 | 2028-12-15 |  | 3205d | 72d |
| 155 | 1.7.6.1 | **基坑开挖施工** | 136d | 2028-05-13 | 2028-09-25 |  | 3205d |  |
| 156 | 1.7.6.1.1 | 第二层土方开挖 | 3d | 2028-05-13 | 2028-05-15 | 116 | 3205d | 0d |
| 157 | 1.7.6.1.2 | 第二道混凝土支撑（含养护）（542.96m³） | 15d | 2028-05-16 | 2028-05-30 | 156 | 3205d | 0d |
| 158 | 1.7.6.1.3 | 第三层土方开挖挖（2330.34m³） | 4d | 2028-05-31 | 2028-06-03 | 157 | 3205d | 0d |
| 159 | 1.7.6.1.4 | 第三道混凝土支撑（含养护）（474.946m³） | 15d | 2028-06-04 | 2028-06-18 | 158 | 3205d | 0d |
| 160 | 1.7.6.1.5 | 第四层土方开挖（2735.4m³） | 5d | 2028-06-19 | 2028-06-23 | 159 | 3205d | 0d |
| 161 | 1.7.6.1.6 | 第四道混凝土支撑（含养护）（626.158m³） | 15d | 2028-06-24 | 2028-07-08 | 160 | 3205d | 0d |
| 162 | 1.7.6.1.7 | 第五层土方开挖（2403m³） | 6d | 2028-07-09 | 2028-07-14 | 161 | 3205d | 0d |
| 163 | 1.7.6.1.8 | 第五道混凝土支撑（含养护）（626.158m³） | 15d | 2028-07-15 | 2028-07-29 | 162 | 3205d | 0d |
| 164 | 1.7.6.1.9 | 第六层土方开挖（2540.76m³） | 6d | 2028-07-30 | 2028-08-04 | 163 | 3205d | 0d |
| 165 | 1.7.6.1.10 | 第六道混凝土支撑（含养护）（976.1976m³） | 15d | 2028-08-05 | 2028-08-19 | 164 | 3205d | 0d |
| 166 | 1.7.6.1.11 | 第七层土方开挖（3135m³） | 7d | 2028-08-20 | 2028-08-26 | 165 | 3205d | 0d |
| 167 | 1.7.6.1.12 | 第七道混凝土支撑（含养护）（740.376m³） | 15d | 2028-08-27 | 2028-09-10 | 166 | 3205d | 0d |
| 168 | 1.7.6.1.13 | 第八层土方开挖（3196.68m³） | 7d | 2028-09-11 | 2028-09-17 | 167 | 3205d | 0d |
| 169 | 1.7.6.1.14 | 垫层及防水施工 | 3d | 2028-09-18 | 2028-09-20 | 168 | 3205d | 0d |
| 170 | 1.7.6.1.15 | 底板混凝土浇筑 | 5d | 2028-09-21 | 2028-09-25 | 169 | 3205d | 0d |

| ID | WBS | Task | Duration | Start | Finish | Predecessors | Total slack | Free slack |
| --- | --- | --- | --- | --- | --- | --- | --- | --- |
| 171 | 1.7.6.2 | **结构回筑** | 81d | 2028-09-26 | 2028-12-15 |  | 3205d |  |
| 172 | 1.7.6.2.1 | 底板养护及拆除第七道支撑 | 7d | 2028-09-26 | 2028-10-02 | 170 | 3205d | 0d |
| 173 | 1.7.6.2.2 | 施工内衬墙及B4板（含养护） | 12d | 2028-10-03 | 2028-10-14 | 172 | 3205d | 0d |
| 174 | 1.7.6.2.3 | 拆除第六、五道支撑 | 7d | 2028-10-15 | 2028-10-21 | 173 | 3205d | 0d |
| 175 | 1.7.6.2.4 | 施工内衬墙、B3板及B2夹层板（含养护） | 12d | 2028-10-22 | 2028-11-02 | 174 | 3205d | 0d |
| 176 | 1.7.6.2.5 | 拆除第四道支撑 | 3d | 2028-11-03 | 2028-11-05 | 175 | 3205d | 0d |
| 177 | 1.7.6.2.6 | 施工内衬墙及B1板（含养护） | 10d | 2028-11-06 | 2028-11-15 | 176 | 3205d | 0d |
| 178 | 1.7.6.2.7 | 拆除第三、二道支撑 | 7d | 2028-11-16 | 2028-11-22 | 177 | 3205d | 0d |
| 179 | 1.7.6.2.8 | 施工内衬墙及顶板（含养护） | 10d | 2028-11-23 | 2028-12-02 | 178 | 3205d | 0d |
| 180 | 1.7.6.2.9 | 顶板防水 | 3d | 2028-12-03 | 2028-12-05 | 179 | 3205d | 0d |
| 181 | 1.7.6.2.10 | 回填及拆除首道支撑 | 10d | 2028-12-06 | 2028-12-15 | 180 | 3205d |  |
| 182 | 1.7.7 | **3-2区施工** | 329d | 2029-02-26 | 2030-01-20 |  | 3133d |  |
| 183 | 1.7.7.1 | **基坑开挖施工** | 144d | 2029-02-26 | 2029-07-19 |  | 3133d |  |
| 184 | 1.7.7.1.1 | 第二层土方开挖 | 5d | 2029-02-26 | 2029-03-02 | 154, 153 | 3133d | 0d |
| 185 | 1.7.7.1.2 | 第二道混凝土支撑（含养护） | 20d | 2029-03-03 | 2029-03-22 | 184 | 3133d | 0d |
| 186 | 1.7.7.1.3 | 第三层土方开挖挖 | 5d | 2029-03-23 | 2029-03-27 | 185 | 3133d | 0d |
| 187 | 1.7.7.1.4 | 第三道混凝土支撑（含养护） | 20d | 2029-03-28 | 2029-04-16 | 186 | 3133d | 0d |
| 188 | 1.7.7.1.5 | 第四层土方开挖 | 6d | 2029-04-17 | 2029-04-22 | 187 | 3133d | 0d |
| 189 | 1.7.7.1.6 | 第四道混凝土支撑（含养护） | 20d | 2029-04-23 | 2029-05-12 | 188 | 3133d | 0d |
| 190 | 1.7.7.1.7 | 第五层土方开挖 | 6d | 2029-05-13 | 2029-05-18 | 189 | 3133d | 0d |
| 191 | 1.7.7.1.8 | 第五道混凝土支撑（含养护） | 20d | 2029-05-19 | 2029-06-07 | 190 | 3133d | 0d |
| 192 | 1.7.7.1.9 | 第六层土方开挖 | 7d | 2029-06-08 | 2029-06-14 | 191 | 3133d | 0d |
| 193 | 1.7.7.1.10 | 第六道混凝土支撑（含养护） | 20d | 2029-06-15 | 2029-07-04 | 192 | 3133d | 0d |
| 194 | 1.7.7.1.11 | 第七层土方开挖 | 7d | 2029-07-05 | 2029-07-11 | 193 | 3133d | 0d |
| 195 | 1.7.7.1.12 | 垫层及防水施工 | 3d | 2029-07-12 | 2029-07-14 | 194 | 3133d | 0d |
| 196 | 1.7.7.1.13 | 底板混凝土浇筑 | 5d | 2029-07-15 | 2029-07-19 | 195 | 3133d | 0d |

| ID | WBS | Task | Duration | Start | Finish | Predecessors | Total slack | Free slack |
| --- | --- | --- | --- | --- | --- | --- | --- | --- |
| 197 | 1.7.7.2 | **结构回筑** | 95d | 2029-07-20 | 2029-10-22 |  | 3133d | 0d |
| 198 | 1.7.7.2.1 | 底板养护及拆除第六道支撑 | 7d | 2029-07-20 | 2029-07-26 | 196 | 3133d | 0d |
| 199 | 1.7.7.2.2 | 施工内衬墙及B3板（含养护） | 12d | 2029-07-27 | 2029-08-07 | 198 | 3133d | 0d |
| 200 | 1.7.7.2.3 | 拆除第五道支撑 | 3d | 2029-08-08 | 2029-08-10 | 199 | 3133d | 0d |
| 201 | 1.7.7.2.4 | 施工内衬墙至第四道支撑底（含养护） | 12d | 2029-08-11 | 2029-08-22 | 200 | 3133d | 0d |
| 202 | 1.7.7.2.5 | 拆除第四道支撑 | 3d | 2029-08-23 | 2029-08-25 | 201 | 3133d | 0d |
| 203 | 1.7.7.2.6 | 施工B2板（含养护） | 12d | 2029-08-26 | 2029-09-06 | 202 | 3133d | 0d |
| 204 | 1.7.7.2.7 | 拆除第三道支撑 | 3d | 2029-09-07 | 2029-09-09 | 203 | 3133d | 0d |
| 205 | 1.7.7.2.8 | 施工内衬墙及B1板（含养护） | 12d | 2029-09-10 | 2029-09-21 | 204 | 3133d | 0d |
| 206 | 1.7.7.2.9 | 拆除第二道支撑 | 3d | 2029-09-22 | 2029-09-24 | 205 | 3133d | 0d |
| 207 | 1.7.7.2.10 | 施工内衬墙及顶板（含养护） | 15d | 2029-09-25 | 2029-10-09 | 206 | 3133d | 0d |
| 208 | 1.7.7.2.11 | 顶板防水 | 3d | 2029-10-10 | 2029-10-12 | 207 | 3133d | 0d |
| 209 | 1.7.7.2.12 | 回填及拆除首道支撑 | 10d | 2029-10-13 | 2029-10-22 | 208 | 3133d |  |
| 210 | 1.7.7.3 | 西侧管线搬迁至3区/4区 | 90d | 2029-10-23 | 2030-01-20 | 197 | 3133d | 0d |
| 211 | 1.7.8 | **5区施工** | 172d | 2030-01-21 | 2030-07-11 |  | 3133d |  |
| 212 | 1.7.8.1 | **基坑开挖施工** | 69d | 2030-01-21 | 2030-03-30 |  | 3133d |  |
| 213 | 1.7.8.1.1 | 第二层土方开挖（1826方） | 7d | 2030-01-21 | 2030-01-27 | 210 | 3133d | 0d |
| 214 | 1.7.8.1.2 | 第二道撑（钢支撑16根） | 5d | 2030-01-24 | 2030-01-28 | 213FF+1d | 3133d | 0d |
| 215 | 1.7.8.1.3 | 第三层土方开挖（1664方） | 7d | 2030-01-29 | 2030-02-04 | 214 | 3133d | 0d |
| 216 | 1.7.8.1.4 | 第三道撑（钢支撑28根） | 9d | 2030-01-28 | 2030-02-05 | 215FF+1d | 3133d | 0d |
| 217 | 1.7.8.1.5 | 第四层土方开挖（1829方） | 7d | 2030-02-06 | 2030-02-12 | 216 | 3133d | 0d |
| 218 | 1.7.8.1.6 | 第四道撑（混凝土支撑273方）含养护 | 10d | 2030-02-13 | 2030-02-22 | 217 | 3133d | 0d |
| 219 | 1.7.8.1.7 | 第五层土方开挖（1902方） | 7d | 2030-02-23 | 2030-03-01 | 218 | 3133d | 0d |
| 220 | 1.7.8.1.8 | 第五道撑（钢支撑28根） | 9d | 2030-02-22 | 2030-03-02 | 219FF+1d | 3133d | 0d |
| 221 | 1.7.8.1.9 | 第六层土方开挖（1566方） | 7d | 2030-03-03 | 2030-03-09 | 220 | 3133d | 0d |
| 222 | 1.7.8.1.10 | 第六道撑（钢支撑28根） | 9d | 2030-03-02 | 2030-03-10 | 221FF+1d | 3133d | 0d |
| 223 | 1.7.8.1.11 | 第七层土方开挖（1565方） | 7d | 2030-03-11 | 2030-03-17 | 222 | 3133d | 0d |
| 224 | 1.7.8.1.12 | 垫层及防水施工 | 3d | 2030-03-18 | 2030-03-20 | 223 | 3133d | 0d |
| 225 | 1.7.8.1.13 | 结构底板施工 | 10d | 2030-03-21 | 2030-03-30 | 224 | 3133d | 0d |

| ID | WBS | Task | Duration | Start | Finish | Predecessors | Total slack | Free slack |
| --- | --- | --- | --- | --- | --- | --- | --- | --- |
| 226 | 1.7.8.2 | **结构回筑** | 103d | 2030-03-31 | 2030-07-11 |  | 3133d |  |
| 227 | 1.7.8.2.1 | **5-1结构段** | 97d | 2030-03-31 | 2030-07-05 |  | 3133d |  |
| 228 | 1.7.8.2.1.1 | 底板养护及拆除第六道钢支撑 | 12d | 2030-03-31 | 2030-04-11 | 225 | 3133d | 0d |
| 229 | 1.7.8.2.1.2 | 施工内衬墙至第五道钢支撑底（含养护） | 15d | 2030-04-12 | 2030-04-26 | 228 | 3139d | 0d |
| 230 | 1.7.8.2.1.3 | 施工第五道钢支撑换撑14根 | 5d | 2030-04-27 | 2030-05-01 | 229 | 3139d | 0d |
| 231 | 1.7.8.2.1.4 | 施工B2板（含养护） | 15d | 2030-05-02 | 2030-05-16 | 230 | 3139d | 0d |
| 232 | 1.7.8.2.1.5 | 拆除第四道砼支撑及第五道换撑 | 10d | 2030-05-17 | 2030-05-26 | 231 | 3139d | 0d |
| 233 | 1.7.8.2.1.6 | 施工内衬墙及B1板（含养护） | 15d | 2030-05-27 | 2030-06-10 | 232 | 3139d | 0d |
| 234 | 1.7.8.2.1.7 | 拆除第三、二道钢支撑 | 5d | 2030-06-11 | 2030-06-15 | 233 | 3139d | 0d |
| 235 | 1.7.8.2.1.8 | 施工内衬墙及顶板（含养护） | 20d | 2030-06-16 | 2030-07-05 | 234 | 3139d |  |
| 236 | 1.7.8.2.2 | **5-2结构段** | 72d | 2030-04-12 | 2030-06-22 |  | 3133d |  |
| 237 | 1.7.8.2.2.1 | 底板养护及拆除第五道钢支撑 | 12d | 2030-04-12 | 2030-04-23 | 228 | 3133d | 0d |
| 238 | 1.7.8.2.2.2 | 施工内衬墙至第四道钢支撑底（含养护） | 15d | 2030-04-24 | 2030-05-08 | 237 | 3133d | 0d |
| 239 | 1.7.8.2.2.3 | 施工第四道钢支撑换撑14根 | 5d | 2030-05-09 | 2030-05-13 | 238 | 3133d | 0d |
| 240 | 1.7.8.2.2.4 | 施工内衬墙及B1板（含养护） | 15d | 2030-05-14 | 2030-05-28 | 239 | 3133d | 0d |
| 241 | 1.7.8.2.2.5 | 拆除第三道砼支撑及钢支撑换撑 | 10d | 2030-05-29 | 2030-06-07 | 240 | 3133d | 0d |
| 242 | 1.7.8.2.2.6 | 施工内衬墙及顶板（含养护） | 15d | 2030-06-08 | 2030-06-22 | 241 | 3133d | 0d |
| 243 | 1.7.8.2.3 | 封堵墙拆除及各层楼板浇筑 | 19d | 2030-06-23 | 2030-07-11 | 242 | 3133d |  |
| 244 | 1.8 | 污水管接入泵 | 17d | 2029-10-23 | 2029-11-08 | 197 | 3378d |  |
| 245 | 1.9 | **2区施工** | 304d | 2029-02-26 | 2029-12-26 |  | 3330d | 0d |
| 246 | 1.9.1 | **围护施工** | 103d | 2029-02-26 | 2029-06-08 |  | 3330d |  |
| 247 | 1.9.1.1 | 清障42孔 | 7d | 2029-02-26 | 2029-03-04 | 153 | 3330d | 0d |
| 248 | 1.9.1.2 | 槽壁加固 | 14d | 2029-03-05 | 2029-03-18 | 247 | 3330d | 0d |
| 249 | 1.9.1.3 | 地墙设备进场及施工准备 | 14d | 2029-03-15 | 2029-03-28 | 248SS+10d | 3330d | 0d |
| 250 | 1.9.1.4 | 地下连续墙施工 | 20d | 2029-03-29 | 2029-04-17 | 249 | 3330d | 0d |
| 251 | 1.9.1.5 | 墙缝止水施工 | 7d | 2029-04-18 | 2029-04-24 | 250 | 3330d | 0d |
| 252 | 1.9.1.6 | 坑内加固施工 | 10d | 2029-04-25 | 2029-05-04 | 251 | 3330d | 0d |
| 253 | 1.9.1.7 | 高压旋喷桩嵌缝 | 5d | 2029-05-05 | 2029-05-09 | 252 | 3330d | 0d |
| 254 | 1.9.1.8 | 钻孔桩施工 | 5d | 2029-05-10 | 2029-05-14 | 253 | 3330d | 0d |
| 255 | 1.9.1.9 | 降水井打设 | 5d | 2029-05-15 | 2029-05-19 | 254 | 3330d | 0d |
| 256 | 1.9.1.10 | 首层土方及第一道混凝土支撑（3042m³） | 20d | 2029-05-20 | 2029-06-08 | 255 | 3330d | 0d |

| ID | WBS | Task | Type | Duration | Start | Finish | Predecessors | Total slack | Free slack | Constraint |
| --- | --- | --- | --- | --- | --- | --- | --- | --- | --- | --- |
| 257 | 1.9.2 | **基坑开挖施工** |  | 116d | 2029-06-09 | 2029-10-02 |  | 3330d |  |  |
| 258 | 1.9.2.1 | 第二层土方开挖（2189.27m³） |  | 4d | 2029-06-09 | 2029-06-12 | 256 | 3330d | 0d |  |
| 259 | 1.9.2.2 | 第二道混凝土支撑（含养护）（13根382.14m³） |  | 15d | 2029-06-13 | 2029-06-27 | 258 | 3330d | 0d |  |
| 260 | 1.9.2.3 | 第三层土方开挖挖（3317.64） |  | 5d | 2029-06-28 | 2029-07-02 | 259 | 3330d | 0d |  |
| 261 | 1.9.2.4 | 第三道混凝土支撑（含养护）(302.32m³） |  | 15d | 2029-07-03 | 2029-07-17 | 260 | 3330d | 0d |  |
| 262 | 1.9.2.5 | 第四层土方开挖（3432.52m³） |  | 5d | 2029-07-18 | 2029-07-22 | 261 | 3330d | 0d |  |
| 263 | 1.9.2.6 | 第四道混凝土支撑（含养护）（402.32m³） |  | 15d | 2029-07-23 | 2029-08-06 | 262 | 3330d | 0d |  |
| 264 | 1.9.2.7 | 第五层土方开挖(3060.89m³） |  | 6d | 2029-08-07 | 2029-08-12 | 263 | 3330d | 0d |  |
| 265 | 1.9.2.8 | 第五道混凝土支撑（含养护）（402.196m³） |  | 15d | 2029-08-13 | 2029-08-27 | 264 | 3330d | 0d |  |
| 266 | 1.9.2.9 | 第六层土方开挖（4733.54m³） |  | 6d | 2029-08-28 | 2029-09-02 | 265 | 3330d | 0d |  |
| 267 | 1.9.2.10 | 第六道混凝土支撑（含养护）（450.392m³） |  | 15d | 2029-09-03 | 2029-09-17 | 266 | 3330d | 0d |  |
| 268 | 1.9.2.11 | 第七层土方开挖（4060.89m³） |  | 7d | 2029-09-18 | 2029-09-24 | 267 | 3330d | 0d |  |
| 269 | 1.9.2.12 | 垫层及防水施工（1156.32平方米垫层250） |  | 3d | 2029-09-25 | 2029-09-27 | 268 | 3330d | 0d |  |
| 270 | 1.9.2.13 | 底板混凝土浇筑（1156.32平方） |  | 5d | 2029-09-28 | 2029-10-02 | 269 | 3330d | 0d |  |
| 271 | 1.9.3 | **结构回筑** |  | 85d | 2029-10-03 | 2029-12-26 |  | 3330d |  |  |
| 272 | 1.9.3.1 | 底板养护及拆除第六道支撑 |  | 7d | 2029-10-03 | 2029-10-09 | 270 | 3330d | 0d |  |
| 273 | 1.9.3.2 | 施工内衬墙至第五道支撑底（含养护） |  | 10d | 2029-10-10 | 2029-10-19 | 272 | 3330d | 0d |  |
| 274 | 1.9.3.3 | 拆除第五道支撑 |  | 3d | 2029-10-20 | 2029-10-22 | 273 | 3330d | 0d |  |
| 275 | 1.9.3.4 | 施工B3板（含养护） |  | 10d | 2029-10-23 | 2029-11-01 | 274 | 3330d | 0d |  |
| 276 | 1.9.3.5 | 拆除第四道支撑 |  | 3d | 2029-11-02 | 2029-11-04 | 275 | 3330d | 0d |  |
| 277 | 1.9.3.6 | 施工内衬墙及B2板（含养护） |  | 12d | 2029-11-05 | 2029-11-16 | 276 | 3330d | 0d |  |
| 278 | 1.9.3.7 | 拆除第三道支撑 |  | 3d | 2029-11-17 | 2029-11-19 | 277 | 3330d | 0d |  |
| 279 | 1.9.3.8 | 施工内衬墙及B1板（含养护） |  | 12d | 2029-11-20 | 2029-12-01 | 278 | 3330d | 0d |  |
| 280 | 1.9.3.9 | 拆除第二道支撑 |  | 3d | 2029-12-02 | 2029-12-04 | 279 | 3330d | 0d |  |
| 281 | 1.9.3.10 | 施工内衬墙及顶板（含养护） |  | 15d | 2029-12-05 | 2029-12-19 | 280 | 3330d | 0d |  |
| 282 | 1.9.3.11 | 支撑拆除及回填 |  | 7d | 2029-12-20 | 2029-12-26 | 281 | 3330d |  |  |
| 283 | 1.10 | 具备盾构移交条件 | milestone | 0d | 2029-12-26 | 2029-12-26 | 245 | 3330d |  | start no earlier than 2026-03-02 |

| ID | WBS | Task | Duration | Start | Finish | Predecessors | Total slack | Free slack | Constraint |
| --- | --- | --- | --- | --- | --- | --- | --- | --- | --- |
| 284 | 1.11 | **12区施工** | 521d | 2031-05-01 | 2032-10-02 |  | 2319d |  |  |
| 285 | 1.11.1 | **12区围护及加固** | 355d | 2031-05-01 | 2032-04-19 |  | 2319d |  |  |
| 286 | 1.11.1.1 | 清障30孔 | 10d | 2031-05-01 | 2031-05-10 |  | 2585d | 266d | start no earlier than 2031-05-01 |
| 287 | 1.11.1.2 | 三轴止水及坑内加固（73幅） | 12d | 2032-02-01 | 2032-02-12 | 286 | 2319d | 0d | start no earlier than 2032-02-01 |
| 288 | 1.11.1.3 | SMW工法桩（94幅） | 15d | 2032-02-13 | 2032-02-27 | 287 | 2319d | 0d |  |
| 289 | 1.11.1.4 | 钻孔桩围护及工程桩（72+66根） | 20d | 2032-02-28 | 2032-03-18 | 288 | 2319d | 0d |  |
| 290 | 1.11.1.5 | 旋喷桩坑内加固 | 7d | 2032-03-19 | 2032-03-25 | 289 | 2319d | 0d |  |
| 291 | 1.11.1.6 | 拉森钢板桩（135根） | 5d | 2032-03-26 | 2032-03-30 | 290 | 2319d | 0d |  |
| 292 | 1.11.1.7 | 首层土方及第一道混凝土支（1388方） | 20d | 2032-03-31 | 2032-04-19 | 291 | 2319d | 0d |  |
| 293 | 1.11.2 | **12区土方开挖施工** | 43d | 2032-04-20 | 2032-06-01 |  | 2319d |  |  |
| 294 | 1.11.2.1 | 第二层土方开挖（1890方） | 3d | 2032-04-20 | 2032-04-22 | 292 | 2319d | 0d |  |
| 295 | 1.11.2.2 | 第二道钢支撑安装 | 3d | 2032-04-21 | 2032-04-23 | 294FF+1d | 2319d | 0d |  |
| 296 | 1.11.2.3 | 第三层土方开挖（2765方） | 5d | 2032-04-24 | 2032-04-28 | 295 | 2319d | 0d |  |
| 297 | 1.11.2.4 | 第三道钢支撑安装 | 5d | 2032-04-25 | 2032-04-29 | 296FF+1d | 2319d | 0d |  |
| 298 | 1.11.2.5 | 第四层土方开挖（4265） | 10d | 2032-04-30 | 2032-05-09 | 297 | 2319d | 0d |  |
| 299 | 1.11.2.6 | 垫层及防水 | 10d | 2032-05-03 | 2032-05-12 | 298FF+3d | 2319d | 0d |  |
| 300 | 1.11.2.7 | 结构底板施工 | 20d | 2032-05-13 | 2032-06-01 | 299 | 2319d | 0d |  |
| 301 | 1.11.3 | **12区结构回筑** | 123d | 2032-06-02 | 2032-10-02 |  | 2319d |  |  |
| 302 | 1.11.3.1 | 12-1段结构（含换撑） | 20d | 2032-06-02 | 2032-06-21 | 300 | 2319d | 0d |  |
| 303 | 1.11.3.2 | 12-2段结构（含换撑） | 20d | 2032-06-12 | 2032-07-01 | 302SS+10d | 2319d | 0d |  |
| 304 | 1.11.3.3 | 12-3段结构（含换撑） | 20d | 2032-06-22 | 2032-07-11 | 303SS+10d | 2319d | 0d |  |
| 305 | 1.11.3.4 | 12-4段结构（敞开段） | 15d | 2032-07-02 | 2032-07-16 | 304SS+10d | 2319d | 0d |  |
| 306 | 1.11.3.5 | 12-5段结构（敞开段） | 15d | 2032-09-18 | 2032-10-02 | 305SS+78d | 2319d |  |  |
| 309 | 1.12 | 临平路250弄、60弄拆迁 | 1096d | 2026-01-01 | 2028-12-31 |  | 2107d | 0d | finish no earlier than 2028-12-31 |
| 310 | 1.13 | 临平路管线搬迁 | 181d | 2029-01-01 | 2029-06-30 | 309 | 2107d | 0d | start no earlier than 2029-01-01 |

| ID | WBS | Task | Duration | Start | Finish | Predecessors | Total slack | Free slack | Constraint |
| --- | --- | --- | --- | --- | --- | --- | --- | --- | --- |
| 311 | 1.14 | **8-1区及临平路井施工** | 596d | 2029-07-01 | 2031-02-16 |  | 2098d | 13d |  |
| 312 | 1.14.1 | 施工围挡布置及前期准备 | 20d | 2029-07-01 | 2029-07-20 | 310 | 2107d | 0d |  |
| 313 | 1.14.2 | **8-1区及临平路井围护及加固** | 175d | 2029-07-21 | 2030-01-11 | 312 | 2107d |  |  |
| 314 | 1.14.2.1 | 三轴槽壁加固施工（406根） | 20d | 2029-07-21 | 2029-08-09 |  | 2107d | 0d |  |
| 315 | 1.14.2.2 | TRD工法施工（133m） | 20d | 2029-08-10 | 2029-08-29 | 314 | 2107d | 0d |  |
| 316 | 1.14.2.3 | 地下连续墙（77幅） | 95d | 2029-08-30 | 2029-12-02 | 315 | 2107d | 0d |  |
| 317 | 1.14.2.4 | N-JET墙缝止水（76根） | 40d | 2029-12-03 | 2030-01-11 | 316 | 2499d |  |  |
| 318 | 1.14.2.5 | 立柱桩（32根） | 16d | 2029-12-03 | 2029-12-18 | 316 | 2107d | 0d |  |
| 319 | 1.14.2.6 | 高压旋喷坑内加固 | 20d | 2029-12-19 | 2030-01-07 | 318 | 2107d | 0d |  |
| 320 | 1.14.3 | **8-1区土方开挖施工** | 248d | 2030-01-08 | 2030-09-12 |  | 2098d |  |  |
| 321 | 1.14.3.1 | 降水井施工 | 10d | 2030-01-08 | 2030-01-17 | 319 | 2107d | 0d |  |
| 322 | 1.14.3.2 | 首层土方及第一道混凝土支撑 | 30d | 2030-01-18 | 2030-02-16 | 319SS+28d, 321 | 2107d | 0d |  |
| 323 | 1.14.3.3 | 覆罩法大棚施工 | 30d | 2030-02-07 | 2030-03-08 | 322SS+20d | 2107d | 0d |  |
| 324 | 1.14.3.4 | 第二层土方开挖 | 5d | 2030-03-09 | 2030-03-13 | 323 | 2107d | 0d |  |
| 325 | 1.14.3.5 | 第二道混凝土支撑施工（包括临时支撑施工） | 15d | 2030-03-14 | 2030-03-28 | 324 | 2107d | 0d |  |
| 326 | 1.14.3.6 | 第三层土方开挖（包括上道临时支撑拆除） | 5d | 2030-03-29 | 2030-04-02 | 325 | 2107d | 0d |  |
| 327 | 1.14.3.7 | 第三道混凝土支撑施工（包括临时支撑施工） | 18d | 2030-04-03 | 2030-04-20 | 326 | 2107d | 0d |  |
| 328 | 1.14.3.8 | 第四层土方开挖（包括上道临时支撑拆除） | 5d | 2030-04-21 | 2030-04-25 | 327 | 2107d | 9d |  |
| 329 | 1.14.3.9 | 第四道混凝土支撑施工（包括临时支撑施工） | 18d | 2030-05-05 | 2030-05-22 | 328 | 2098d | 0d | finish no earlier than 2030-05-22 |
| 330 | 1.14.3.10 | 第五层土方开挖（包括上道临时支撑拆除） | 4d | 2030-05-23 | 2030-05-26 | 329 | 2098d | 0d |  |
| 331 | 1.14.3.11 | 第五道混凝土支撑施工（包括临时支撑施工） | 18d | 2030-05-27 | 2030-06-13 | 330 | 2098d | 0d |  |
| 332 | 1.14.3.12 | 第六层土方开挖（包括上道临时支撑拆除） | 4d | 2030-06-14 | 2030-06-17 | 331 | 2098d | 0d |  |
| 333 | 1.14.3.13 | 第六道混凝土支撑施工（包括临时支撑施工） | 18d | 2030-06-18 | 2030-07-05 | 332 | 2098d | 0d |  |
| 334 | 1.14.3.14 | 第七层土方开挖（包括上道临时支撑拆除） | 6d | 2030-07-06 | 2030-07-11 | 333 | 2098d | 0d |  |
| 335 | 1.14.3.15 | 第七道混凝土支撑施工（包括临时支撑施工） | 18d | 2030-07-12 | 2030-07-29 | 334 | 2098d | 0d |  |
| 336 | 1.14.3.16 | 第八层土方开挖（包括上道临时支撑拆除） | 5d | 2030-07-30 | 2030-08-03 | 335 | 2098d | 0d |  |
| 337 | 1.14.3.17 | 第八道混凝土支撑施工（包括临时支撑施工） | 18d | 2030-08-04 | 2030-08-21 | 336 | 2098d | 0d |  |
| 338 | 1.14.3.18 | 第九层土方开挖（包括上道临时支撑拆除） | 4d | 2030-08-22 | 2030-08-25 | 337 | 2098d | 0d |  |
| 339 | 1.14.3.19 | 垫层及底板施工 | 18d | 2030-08-26 | 2030-09-12 | 338 | 2098d | 0d |  |

| ID | WBS | Task | Duration | Start | Finish | Predecessors | Total slack | Free slack | Constraint |
| --- | --- | --- | --- | --- | --- | --- | --- | --- | --- |
| 340 | 1.14.4 | **8-1区结构回筑施工** | 157d | 2030-09-13 | 2031-02-16 |  | 2098d |  |  |
| 341 | 1.14.4.1 | 拆除第八道砼支撑，浇筑侧墙及B4板 | 25d | 2030-09-13 | 2030-10-07 | 339 | 2098d | 0d |  |
| 342 | 1.14.4.2 | 拆除第七道砼支撑，浇筑侧墙及重点风道夹层板 | 25d | 2030-10-08 | 2030-11-01 | 341 | 2098d | 0d |  |
| 343 | 1.14.4.3 | 拆除第六道砼支撑，依次浇筑B3板、B2板及侧墙 | 32d | 2030-11-02 | 2030-12-03 | 342 | 2098d | 0d |  |
| 344 | 1.14.4.4 | 拆除第五道砼支撑，浇筑侧墙至第四道砼支撑底 | 20d | 2030-12-04 | 2030-12-23 | 343 | 2098d | 0d |  |
| 345 | 1.14.4.5 | 拆除第四道砼支撑，浇筑侧墙及B1板 | 25d | 2030-12-24 | 2031-01-17 | 344 | 2098d | 0d |  |
| 346 | 1.14.4.6 | 依次拆除第三道砼支撑、第二道砼支撑，浇筑剩余主体结构 | 18d | 2031-01-18 | 2031-02-04 | 345 | 2098d | 0d |  |
| 347 | 1.14.4.7 | 覆土至第一道砼支撑底，拆除第一道砼支撑 | 12d | 2031-02-05 | 2031-02-16 | 346 | 2098d |  |  |
| 348 | 1.14.5 | **临平路井结构回筑施工** | 97d | 2030-08-26 | 2030-11-30 |  | 2176d |  |  |
| 349 | 1.14.5.1 | 第八道支撑拆除 | 7d | 2030-08-26 | 2030-09-01 | 338 | 2176d | 0d |  |
| 350 | 1.14.5.2 | 侧墙、顶框架，中框架、下一层框架及侧墙施工 | 35d | 2030-09-02 | 2030-10-06 | 349 | 2176d | 0d |  |
| 351 | 1.14.5.3 | 拆除各道支撑 | 35d | 2030-10-07 | 2030-11-10 | 350 | 2176d | 0d |  |
| 352 | 1.14.5.4 | MJS施工（38根） | 20d | 2030-11-11 | 2030-11-30 | 351 | 2176d |  |  |
| 353 | 1.15 | 曲阳南路临平路路口管线搬迁及道路翻交 | 90d | 2031-03-02 | 2031-05-30 | 311 | 2085d | 0d | start no earlier than 2031-03-02 |
| 354 | 1.16 | **8-2区施工** | 454d | 2031-05-31 | 2032-08-26 |  | 2085d | 5d |  |
| 355 | 1.16.1 | **8-2区围护施工** | 123d | 2031-05-31 | 2031-09-30 |  | 2085d |  |  |
| 356 | 1.16.1.1 | 三轴槽壁加固施工（198根） | 15d | 2031-05-31 | 2031-06-14 | 353 | 2085d | 0d |  |
| 357 | 1.16.1.2 | 地下连续墙施工（22幅） | 55d | 2031-06-15 | 2031-08-08 | 356 | 2085d | 0d |  |
| 358 | 1.16.1.3 | N-JET工法施工（11根） | 11d | 2031-08-09 | 2031-08-19 | 357 | 2085d | 0d |  |
| 359 | 1.16.1.4 | RJP工法施工（9根） | 9d | 2031-08-09 | 2031-08-17 | 357 | 2460d |  |  |
| 360 | 1.16.1.5 | 立柱桩施工（24根） | 12d | 2031-08-20 | 2031-08-31 | 358 | 2085d | 0d |  |
| 361 | 1.16.1.6 | 高压旋喷加固 | 30d | 2031-09-01 | 2031-09-30 | 360 | 2085d | 0d |  |
| 362 | 1.16.2 | **8-2区土方开挖施工** | 165d | 2031-10-01 | 2032-03-13 |  | 2085d |  |  |
| 363 | 1.16.2.1 | 降水井施工 | 7d | 2031-10-01 | 2031-10-07 | 361 | 2085d | 0d |  |
| 364 | 1.16.2.2 | 首层土方及第一道混凝土支撑 | 20d | 2031-10-08 | 2031-10-27 | 363 | 2085d | 0d |  |
| 365 | 1.16.2.3 | 第二层土方开挖 | 7d | 2031-10-28 | 2031-11-03 | 364 | 2085d | 0d |  |
| 366 | 1.16.2.4 | 第二道混凝土支撑施工（包括临时支撑施工） | 12d | 2031-11-04 | 2031-11-15 | 365 | 2085d | 0d |  |
| 367 | 1.16.2.5 | 第三层土方开挖（包括上道临时支撑拆除） | 7d | 2031-11-16 | 2031-11-22 | 366 | 2085d | 0d |  |
| 368 | 1.16.2.6 | 第三道混凝土支撑施工（包括临时支撑施工） | 12d | 2031-11-23 | 2031-12-04 | 367 | 2085d | 0d |  |
| 369 | 1.16.2.7 | 第四层土方开挖（包括上道临时支撑拆除） | 7d | 2031-12-05 | 2031-12-11 | 368 | 2085d | 0d |  |
| 370 | 1.16.2.8 | 第四道混凝土支撑施工（包括临时支撑施工） | 12d | 2031-12-12 | 2031-12-23 | 369 | 2085d | 0d |  |
| 371 | 1.16.2.9 | 第五层土方开挖（包括上道临时支撑拆除） | 7d | 2031-12-24 | 2031-12-30 | 370 | 2085d | 0d |  |
| 372 | 1.16.2.10 | 第五道混凝土支撑施工（包括临时支撑施工） | 12d | 2031-12-31 | 2032-01-11 | 371 | 2085d | 0d |  |
| 373 | 1.16.2.11 | 第六层土方开挖（包括上道临时支撑拆除） | 7d | 2032-01-12 | 2032-01-18 | 372 | 2085d | 0d |  |
| 374 | 1.16.2.12 | 第六道混凝土支撑施工（包括临时支撑施工） | 12d | 2032-01-19 | 2032-01-30 | 373 | 2085d | 0d |  |
| 375 | 1.16.2.13 | 第七层土方开挖（包括上道临时支撑拆除） | 7d | 2032-01-31 | 2032-02-06 | 374 | 2085d | 0d |  |
| 376 | 1.16.2.14 | 第七道混凝土支撑施工（包括临时支撑施工） | 12d | 2032-02-07 | 2032-02-18 | 375 | 2085d | 0d |  |
| 377 | 1.16.2.15 | 第八层土方开挖（包括上道临时支撑拆除） | 6d | 2032-02-19 | 2032-02-24 | 376 | 2085d | 0d |  |
| 378 | 1.16.2.16 | 垫层及底板施工 | 18d | 2032-02-25 | 2032-03-13 | 377 | 2085d | 0d |  |

| ID | WBS | Task | Duration | Start | Finish | Predecessors | Total slack | Free slack | Constraint |
| --- | --- | --- | --- | --- | --- | --- | --- | --- | --- |
| 379 | 1.16.3 | **8-2区结构回筑施工** | 166d | 2032-03-14 | 2032-08-26 |  | 2085d |  |  |
| 380 | 1.16.3.1 | 拆除第七道砼支撑，浇筑侧墙及B4板 | 25d | 2032-03-14 | 2032-04-07 | 378 | 2085d | 0d |  |
| 381 | 1.16.3.2 | 拆除第六道砼支撑，浇筑侧墙及重点风道夹层板 | 25d | 2032-04-08 | 2032-05-02 | 380 | 2085d | 0d |  |
| 382 | 1.16.3.3 | 拆除第五道砼支撑，浇筑B3板及侧墙至第四道砼支撑底 | 25d | 2032-05-03 | 2032-05-27 | 381 | 2085d | 0d |  |
| 383 | 1.16.3.4 | 拆除第四道砼支撑，浇筑侧墙及B2板 | 25d | 2032-05-28 | 2032-06-21 | 382 | 2085d | 0d |  |
| 384 | 1.16.3.5 | 拆除第三道钢支撑，浇筑临时封堵墙及B1板 | 30d | 2032-06-22 | 2032-07-21 | 383 | 2085d | 0d |  |
| 385 | 1.16.3.6 | 拆除第二道钢支撑，浇筑临时封堵墙及剩余主体结构及顶板挡土墙 | 30d | 2032-07-22 | 2032-08-20 | 384 | 2085d | 0d |  |
| 386 | 1.16.3.7 | 覆土至第一道砼支撑底，拆除第一道砼支撑 | 6d | 2032-08-21 | 2032-08-26 | 385 | 2085d |  |  |
| 387 | 1.17 | 临平路井二结构、8-1附属结构施工 | 213d | 2032-02-01 | 2032-08-31 |  | 2351d |  | finish no earlier than 2032-08-31 |
| 388 | 1.18 | 老泵站拆除 | 30d | 2031-06-01 | 2031-06-30 | 353 | 2779d |  | start no earlier than 2031-06-01 |
| 389 | 1.19 | **6区施工** | 488d | 2031-07-01 | 2032-10-30 |  | 1752d | 1d |  |
| 390 | 1.19.1 | **6区围护施工** | 173d | 2031-07-01 | 2031-12-20 |  | 1752d |  |  |
| 391 | 1.19.1.1 | **围堰施工** | 49d | 2031-07-01 | 2031-08-18 |  | 2177d | 0d |  |
| 392 | 1.19.1.1.1 | 双排钢板桩施工 | 7d | 2031-07-01 | 2031-07-07 |  | 2177d | 0d | start no earlier than 2031-07-01 |
| 393 | 1.19.1.1.2 | 钢板桩内侧回填土 | 7d | 2031-07-08 | 2031-07-14 | 392 | 2177d | 0d |  |
| 394 | 1.19.1.1.3 | 围堰范围内抽水清淤 | 10d | 2031-07-15 | 2031-07-24 | 393 | 2177d | 0d |  |
| 395 | 1.19.1.1.4 | 老防汛墙拆除 | 15d | 2031-07-25 | 2031-08-08 | 394 | 2177d | 0d |  |
| 396 | 1.19.1.1.5 | 围堰范围内回填土 | 10d | 2031-08-09 | 2031-08-18 | 395 | 2177d |  |  |
| 397 | 1.19.1.2 | 清障施工 | 49d | 2031-07-01 | 2031-08-18 | 391SS | 1752d | 0d |  |
| 398 | 1.19.1.3 | 三轴槽壁加固施工（225根） | 15d | 2031-08-19 | 2031-09-02 | 397 | 1752d | 0d |  |
| 399 | 1.19.1.4 | MJS施工（21根） | 14d | 2031-08-19 | 2031-09-01 | 391 | 2177d |  |  |
| 400 | 1.19.1.5 | 地下连续墙施工（22幅） | 55d | 2031-09-03 | 2031-10-27 | 398 | 1752d | 0d |  |
| 401 | 1.19.1.6 | N-JET工法施工（13根） | 13d | 2031-10-28 | 2031-11-09 | 400 | 2108d |  |  |
| 402 | 1.19.1.7 | RJP工法施工（14根） | 14d | 2031-10-28 | 2031-11-10 | 400 | 1752d | 0d |  |
| 403 | 1.19.1.8 | 立柱桩施工（21根） | 10d | 2031-10-28 | 2031-11-06 | 400 | 2111d |  |  |
| 404 | 1.19.1.9 | 四轴坑内加固施工（825根） | 40d | 2031-11-11 | 2031-12-20 | 402 | 1752d | 0d |  |

| ID | WBS | Task | Duration | Start | Finish | Predecessors | Total slack | Free slack | Constraint |
| --- | --- | --- | --- | --- | --- | --- | --- | --- | --- |
| 405 | 1.19.2 | **6区土方开挖施工** | 184d | 2031-12-21 | 2032-06-21 |  | 1752d |  |  |
| 406 | 1.19.2.1 | 降水井施工 | 7d | 2031-12-21 | 2031-12-27 | 404 | 1752d | 0d |  |
| 407 | 1.19.2.2 | 首层土方及第一道混凝土支撑 | 20d | 2031-12-28 | 2032-01-16 | 406 | 1752d | 0d |  |
| 408 | 1.19.2.3 | 第二层土方开挖 | 5d | 2032-01-17 | 2032-01-21 | 407 | 1752d | 0d |  |
| 409 | 1.19.2.4 | 第二道混凝土支撑施工（包括临时支撑施工） | 15d | 2032-01-22 | 2032-02-05 | 408 | 1752d | 0d |  |
| 410 | 1.19.2.5 | 第三层土方开挖（包括上道临时支撑拆除） | 5d | 2032-02-06 | 2032-02-10 | 409 | 1752d | 0d |  |
| 411 | 1.19.2.6 | 第三道混凝土支撑施工（包括临时支撑施工） | 15d | 2032-02-11 | 2032-02-25 | 410 | 1752d | 0d |  |
| 412 | 1.19.2.7 | 第四层土方开挖（包括上道临时支撑拆除） | 5d | 2032-02-26 | 2032-03-01 | 411 | 1752d | 0d |  |
| 413 | 1.19.2.8 | 第四道混凝土支撑施工（包括临时支撑施工） | 15d | 2032-03-02 | 2032-03-16 | 412 | 1752d | 0d |  |
| 414 | 1.19.2.9 | 第五层土方开挖（包括上道临时支撑拆除） | 4d | 2032-03-17 | 2032-03-20 | 413 | 1752d | 0d |  |
| 415 | 1.19.2.10 | 第五道混凝土支撑施工（包括临时支撑施工） | 18d | 2032-03-21 | 2032-04-07 | 414 | 1752d | 0d |  |
| 416 | 1.19.2.11 | 第六层土方开挖（包括上道临时支撑拆除） | 5d | 2032-04-08 | 2032-04-12 | 415 | 1752d | 0d |  |
| 417 | 1.19.2.12 | 第六道混凝土支撑施工（包括临时支撑施工） | 18d | 2032-04-13 | 2032-04-30 | 416 | 1752d | 0d |  |
| 418 | 1.19.2.13 | 第七层土方开挖（包括上道临时支撑拆除） | 5d | 2032-05-01 | 2032-05-05 | 417 | 1752d | 0d |  |
| 419 | 1.19.2.14 | 第七道混凝土支撑施工（包括临时支撑施工） | 18d | 2032-05-06 | 2032-05-23 | 418 | 1752d | 0d |  |
| 420 | 1.19.2.15 | 第八层土方开挖（包括上道临时支撑拆除） | 4d | 2032-05-24 | 2032-05-27 | 419 | 1752d | 0d |  |
| 421 | 1.19.2.16 | 垫层及底板施工 | 25d | 2032-05-28 | 2032-06-21 | 420 | 1752d | 0d |  |
| 422 | 1.19.3 | **6区结构回筑施工** | 131d | 2032-06-22 | 2032-10-30 |  | 1752d |  |  |
| 423 | 1.19.3.1 | 拆除第七道砼支撑，浇筑侧墙及B4板 | 20d | 2032-06-22 | 2032-07-11 | 421 | 1752d | 0d |  |
| 424 | 1.19.3.2 | 拆除第六道砼支撑，浇筑侧墙及重点风道夹层板 | 20d | 2032-07-12 | 2032-07-31 | 423 | 1752d | 0d |  |
| 425 | 1.19.3.3 | 拆除第五道砼支撑，浇筑B3板及侧墙至第四道砼支撑底 | 20d | 2032-08-01 | 2032-08-20 | 424 | 1752d | 0d |  |
| 426 | 1.19.3.4 | 拆除第四道砼支撑，浇筑侧墙及B2板 | 20d | 2032-08-21 | 2032-09-09 | 425 | 1752d | 0d |  |
| 427 | 1.19.3.5 | 拆除第三道钢支撑，浇筑侧墙及B1板 | 22d | 2032-09-10 | 2032-10-01 | 426 | 1752d | 0d |  |
| 428 | 1.19.3.6 | 拆除第二道钢支撑，浇筑剩余主体结构 | 22d | 2032-10-02 | 2032-10-23 | 427 | 1752d | 0d |  |
| 429 | 1.19.3.7 | 覆土至第一道砼支撑底，拆除第一道砼支撑 | 7d | 2032-10-24 | 2032-10-30 | 428 | 1752d |  |  |
| 430 | 1.20 | 7区管线搬迁 | 61d | 2032-11-01 | 2032-12-31 | 389 | 1751d | 0d | start no earlier than 2032-11-01 |

| ID | WBS | Task | Duration | Start | Finish | Predecessors | Total slack | Free slack |
| --- | --- | --- | --- | --- | --- | --- | --- | --- |
| 431 | 1.21 | **7区施工** | 478d | 2033-01-01 | 2034-04-23 |  | 1751d |  |
| 432 | 1.21.1 | **7区围护施工** | 162d | 2033-01-01 | 2033-06-11 |  | 1751d |  |
| 433 | 1.21.1.1 | 清障施工 | 40d | 2033-01-01 | 2033-02-09 | 430 | 1751d | 0d |
| 434 | 1.21.1.2 | 三轴槽壁加固施工（193幅） | 15d | 2033-02-10 | 2033-02-24 | 433 | 1751d | 0d |
| 435 | 1.21.1.3 | 地下连续墙施工（21幅） | 55d | 2033-02-25 | 2033-04-20 | 434 | 1751d | 0d |
| 436 | 1.21.1.4 | N-JET工法施工（23根） | 12d | 2033-04-21 | 2033-05-02 | 435 | 1751d | 0d |
| 437 | 1.21.1.5 | 立柱桩施工（23根） | 12d | 2033-04-21 | 2033-05-02 | 435 | 2107d |  |
| 438 | 1.21.1.6 | 高压旋喷加固施工 | 40d | 2033-05-03 | 2033-06-11 | 436 | 1751d | 0d |
| 439 | 1.21.2 | **7区土方开挖施工** | 184d | 2033-06-12 | 2033-12-12 |  | 1751d |  |
| 440 | 1.21.2.1 | 降水井施工 | 7d | 2033-06-12 | 2033-06-18 | 438 | 1751d | 0d |
| 441 | 1.21.2.2 | 首层土方及第一道混凝土支撑 | 20d | 2033-06-19 | 2033-07-08 | 440 | 1751d | 0d |
| 442 | 1.21.2.3 | 第二层土方开挖 | 5d | 2033-07-09 | 2033-07-13 | 441 | 1751d | 0d |
| 443 | 1.21.2.4 | 第二道混凝土支撑施工（包括临时支撑施工） | 15d | 2033-07-14 | 2033-07-28 | 442 | 1751d | 0d |
| 444 | 1.21.2.5 | 第三层土方开挖（包括上道临时支撑拆除） | 5d | 2033-07-29 | 2033-08-02 | 443 | 1751d | 0d |
| 445 | 1.21.2.6 | 第三道混凝土支撑施工（包括临时支撑施工） | 15d | 2033-08-03 | 2033-08-17 | 444 | 1751d | 0d |
| 446 | 1.21.2.7 | 第四层土方开挖（包括上道临时支撑拆除） | 5d | 2033-08-18 | 2033-08-22 | 445 | 1751d | 0d |
| 447 | 1.21.2.8 | 第四道混凝土支撑施工（包括临时支撑施工） | 15d | 2033-08-23 | 2033-09-06 | 446 | 1751d | 0d |
| 448 | 1.21.2.9 | 第五层土方开挖（包括上道临时支撑拆除） | 4d | 2033-09-07 | 2033-09-10 | 447 | 1751d | 0d |
| 449 | 1.21.2.10 | 第五道混凝土支撑施工（包括临时支撑施工） | 18d | 2033-09-11 | 2033-09-28 | 448 | 1751d | 0d |
| 450 | 1.21.2.11 | 第六层土方开挖（包括上道临时支撑拆除） | 5d | 2033-09-29 | 2033-10-03 | 449 | 1751d | 0d |
| 451 | 1.21.2.12 | 第六道混凝土支撑施工（包括临时支撑施工） | 18d | 2033-10-04 | 2033-10-21 | 450 | 1751d | 0d |
| 452 | 1.21.2.13 | 第七层土方开挖（包括上道临时支撑拆除） | 5d | 2033-10-22 | 2033-10-26 | 451 | 1751d | 0d |
| 453 | 1.21.2.14 | 第七道混凝土支撑施工（包括临时支撑施工） | 18d | 2033-10-27 | 2033-11-13 | 452 | 1751d | 0d |
| 454 | 1.21.2.15 | 第八层土方开挖（包括上道临时支撑拆除） | 4d | 2033-11-14 | 2033-11-17 | 453 | 1751d | 0d |
| 455 | 1.21.2.16 | 垫层及底板施工 | 25d | 2033-11-18 | 2033-12-12 | 454 | 1751d | 0d |

| ID | WBS | Task | Duration | Start | Finish | Predecessors | Total slack | Free slack |
| --- | --- | --- | --- | --- | --- | --- | --- | --- |
| 456 | 1.21.3 | **7区结构回筑施工** | 132d | 2033-12-13 | 2034-04-23 |  | 1751d |  |
| 457 | 1.21.3.1 | 拆除第七道砼支撑，浇筑侧墙及B4板 | 20d | 2033-12-13 | 2034-01-01 | 455 | 1751d | 0d |
| 458 | 1.21.3.2 | 拆除第六道砼支撑，浇筑侧墙及重点风道夹层板 | 20d | 2034-01-02 | 2034-01-21 | 457 | 1751d | 0d |
| 459 | 1.21.3.3 | 拆除第五道砼支撑，浇筑B3板及侧墙至第四道砼支撑底 | 20d | 2034-01-22 | 2034-02-10 | 458 | 1751d | 0d |
| 460 | 1.21.3.4 | 拆除第四道砼支撑，浇筑侧墙及B2板 | 20d | 2034-02-11 | 2034-03-02 | 459 | 1751d | 0d |
| 461 | 1.21.3.5 | 拆除第三道钢支撑，浇筑临时封堵墙及B1板 | 20d | 2034-03-03 | 2034-03-22 | 460 | 1751d | 0d |
| 462 | 1.21.3.6 | 拆除第二道钢支撑，浇筑临时封堵墙及剩余主体结构及顶板挡土墙 | 25d | 2034-03-23 | 2034-04-16 | 461 | 1751d | 0d |
| 463 | 1.21.3.7 | 覆土至第一道砼支撑底，拆除第一道砼支撑 | 7d | 2034-04-17 | 2034-04-23 | 462 | 1751d |  |
| 464 | 1.22 | **周家嘴路匝道施工** | 1429d | 2029-07-01 | 2033-05-29 |  | 2080d |  |
| 465 | 1.22.1 | **10-1区及10-2区施工** | 303d | 2029-07-01 | 2030-04-29 |  | 2817d | 0d |
| 466 | 1.22.1.1 | **10-1区及10-2区围护施工** | 145d | 2029-07-01 | 2029-11-22 |  | 2845d | 0d |
| 467 | 1.22.1.1.1 | 咬合桩施工（131根） | 110d | 2029-07-01 | 2029-10-18 | 310 | 2845d | 0d |
| 468 | 1.22.1.1.2 | 三轴止水帷幕施工（101根） | 8d | 2029-07-01 | 2029-07-08 | 310 | 2965d | 0d |
| 469 | 1.22.1.1.3 | 排桩施工（112根） | 20d | 2029-07-06 | 2029-07-25 | 468SS+5d | 2965d |  |
| 470 | 1.22.1.1.4 | SMW工法桩施工（168根） | 14d | 2029-07-09 | 2029-07-22 | 468 | 2968d |  |
| 471 | 1.22.1.1.5 | 桩基施工（34根） | 12d | 2029-10-19 | 2029-10-30 | 467 | 2863d | 0d |
| 472 | 1.22.1.1.6 | 三轴坑内加固施工 | 35d | 2029-10-19 | 2029-11-22 | 467 | 2845d |  |
| 473 | 1.22.1.1.7 | 高压旋喷桩施工 | 5d | 2029-10-31 | 2029-11-04 | 471 | 2863d |  |
| 474 | 1.22.1.2 | **10-1区及10-2区土方开挖施工** | 59d | 2029-11-23 | 2030-01-20 |  | 2845d |  |
| 475 | 1.22.1.2.1 | 降水施工 | 7d | 2029-11-23 | 2029-11-29 | 466 | 2845d | 0d |
| 476 | 1.22.1.2.2 | 首层土方及第一道混凝土支撑 | 18d | 2029-11-30 | 2029-12-17 | 475 | 2845d | 0d |
| 477 | 1.22.1.2.3 | 第二层土方开挖 | 2d | 2029-12-18 | 2029-12-19 | 476 | 2845d | 0d |
| 478 | 1.22.1.2.4 | 第二道钢支撑施工 | 2d | 2029-12-20 | 2029-12-21 | 477 | 2845d | 0d |
| 479 | 1.22.1.2.5 | 第三层土方开挖 | 2d | 2029-12-22 | 2029-12-23 | 478 | 2845d | 0d |
| 480 | 1.22.1.2.6 | 第三道钢支撑施工 | 2d | 2029-12-24 | 2029-12-25 | 479 | 2845d | 0d |
| 481 | 1.22.1.2.7 | 第四层土方开挖 | 2d | 2029-12-26 | 2029-12-27 | 480 | 2845d | 0d |
| 482 | 1.22.1.2.8 | 第四道钢支撑施工（10-1区） | 2d | 2029-12-28 | 2029-12-29 | 481 | 2845d | 0d |
| 483 | 1.22.1.2.9 | 第五层土方开挖 | 2d | 2029-12-30 | 2029-12-31 | 482 | 2845d | 0d |
| 484 | 1.22.1.2.10 | 垫层及底板施工 | 20d | 2030-01-01 | 2030-01-20 | 483 | 2845d | 0d |

| ID | WBS | Task | Duration | Start | Finish | Predecessors | Total slack | Free slack | Constraint |
| --- | --- | --- | --- | --- | --- | --- | --- | --- | --- |
| 485 | 1.22.1.3 | **10-1区结构回筑施工** | 71d | 2030-02-18 | 2030-04-29 |  | 2817d |  |  |
| 486 | 1.22.1.3.1 | 拆除第四道撑 | 1d | 2030-02-18 | 2030-02-18 | 484 | 2817d | 0d | start no earlier than 2030-02-18 |
| 487 | 1.22.1.3.2 | 施工侧墙至第三道支撑底，施工侧墙及夹层板后施工钢换撑，拆除第三道支撑 | 25d | 2030-02-19 | 2030-03-15 | 486 | 2817d | 0d |  |
| 488 | 1.22.1.3.3 | 施工侧墙至顶板，拆除换撑及第二道支撑 | 25d | 2030-03-16 | 2030-04-09 | 487 | 2817d | 0d |  |
| 489 | 1.22.1.3.4 | 施工顶板上方挡墙，拆除第一道支撑，并覆土至地面 | 20d | 2030-04-10 | 2030-04-29 | 488 | 2817d |  |  |
| 490 | 1.22.1.4 | **10-2区结构回筑施工** | 56d | 2030-01-21 | 2030-03-17 |  | 2860d |  |  |
| 491 | 1.22.1.4.1 | 拆除第三道撑 | 1d | 2030-01-21 | 2030-01-21 | 484 | 2860d | 0d |  |
| 492 | 1.22.1.4.2 | 施工侧墙至第二道支撑底，施工换撑并拆除第二道支撑 | 25d | 2030-01-22 | 2030-02-15 | 491 | 2860d | 0d |  |
| 493 | 1.22.1.4.3 | 施工剩余侧墙及顶板 | 20d | 2030-02-16 | 2030-03-07 | 492 | 2860d | 0d |  |
| 494 | 1.22.1.4.4 | 拆除换撑及第一道支撑，并覆土至地面 | 10d | 2030-03-08 | 2030-03-17 | 493 | 2860d |  |  |
| 495 | 1.22.2 | 9-1区施工 | 150d | 2030-04-30 | 2030-09-26 | 465 | 2817d | 0d |  |
| 496 | 1.22.3 | 临平路天宝路路口、临平路瑞虹路路口管线搬迁 | 90d | 2030-09-27 | 2030-12-25 | 495 | 2817d | 0d |  |
| 497 | 1.22.4 | **11区施工** | 149d | 2030-12-26 | 2031-05-23 |  | 2817d |  |  |
| 498 | 1.22.4.1 | **11区围护施工** | 48d | 2030-12-26 | 2031-02-11 |  | 2817d |  |  |
| 499 | 1.22.4.1.1 | 三轴止水帷幕（48根） | 5d | 2030-12-26 | 2030-12-30 | 496 | 2817d | 0d |  |
| 500 | 1.22.4.1.2 | 排桩（25根） | 10d | 2030-12-28 | 2031-01-06 | 499SS+2d | 2817d | 0d |  |
| 501 | 1.22.4.1.3 | SMW工法桩（90根） | 10d | 2031-01-05 | 2031-01-14 | 500SS+8d | 2817d | 0d |  |
| 502 | 1.22.4.1.4 | 拉森钢板桩（410根） | 10d | 2031-01-13 | 2031-01-22 | 501SS+8d | 2817d | 0d |  |
| 503 | 1.22.4.1.5 | 高压旋喷施工（6根） | 5d | 2031-01-23 | 2031-01-27 | 501, 502 | 2817d | 0d |  |
| 504 | 1.22.4.1.6 | 立柱桩施工（2根） | 2d | 2031-01-28 | 2031-01-29 | 503 | 2931d |  |  |
| 505 | 1.22.4.1.7 | 三轴坑内加固 | 15d | 2031-01-28 | 2031-02-11 | 503 | 2817d | 0d |  |
| 506 | 1.22.4.2 | **11区土方开挖施工** | 53d | 2031-02-12 | 2031-04-05 |  | 2817d |  |  |
| 507 | 1.22.4.2.1 | 首层土方及第一道混凝土支撑 | 15d | 2031-02-12 | 2031-02-26 | 505 | 2817d | 0d |  |
| 508 | 1.22.4.2.2 | 第二层土方开挖 | 3d | 2031-02-27 | 2031-03-01 | 507 | 2817d | 0d |  |
| 509 | 1.22.4.2.3 | 第二道钢支撑施工 | 3d | 2031-03-02 | 2031-03-04 | 508 | 2817d | 0d |  |
| 510 | 1.22.4.2.4 | 第三层土方开挖 | 5d | 2031-03-05 | 2031-03-09 | 509 | 2817d | 0d |  |
| 511 | 1.22.4.2.5 | 第三道钢支撑施工 | 5d | 2031-03-10 | 2031-03-14 | 510 | 2817d | 0d |  |
| 512 | 1.22.4.2.6 | 第四层土方开挖 | 2d | 2031-03-15 | 2031-03-16 | 511 | 2817d | 0d |  |
| 513 | 1.22.4.2.7 | 垫层及底板施工 | 20d | 2031-03-17 | 2031-04-05 | 512 | 2817d | 0d |  |

| ID | WBS | Task | Duration | Start | Finish | Predecessors | Total slack | Free slack | Constraint |
| --- | --- | --- | --- | --- | --- | --- | --- | --- | --- |
| 514 | 1.22.4.3 | **11区结构回筑施工** | 48d | 2031-04-06 | 2031-05-23 |  | 2817d |  |  |
| 515 | 1.22.4.3.1 | 拆除第三道撑 | 2d | 2031-04-06 | 2031-04-07 | 513 | 2817d | 0d |  |
| 516 | 1.22.4.3.2 | 施工侧墙及中板至第二道支撑底，拆除第二道支撑 | 20d | 2031-04-08 | 2031-04-27 | 515 | 2817d | 0d |  |
| 517 | 1.22.4.3.3 | 施工剩余侧墙及顶板 | 21d | 2031-04-28 | 2031-05-18 | 516 | 2817d | 0d |  |
| 518 | 1.22.4.3.4 | 拆除第一道支撑，并覆土至地面 | 5d | 2031-05-19 | 2031-05-23 | 517 | 2817d |  |  |
| 519 | 1.22.5 | **9-2区施工** | 271d | 2032-09-01 | 2033-05-29 |  | 2080d |  |  |
| 520 | 1.22.5.1 | **9-2区围护施工** | 99d | 2032-09-01 | 2032-12-08 |  | 2080d |  |  |
| 521 | 1.22.5.1.1 | 地墙施工 | 50d | 2032-09-01 | 2032-10-20 | 354 | 2080d | 0d | start no earlier than 2032-09-01 |
| 522 | 1.22.5.1.2 | 高压旋喷桩施工 | 10d | 2032-10-21 | 2032-10-30 | 521 | 2291d |  |  |
| 523 | 1.22.5.1.3 | 立柱桩施工（9根） | 9d | 2032-10-21 | 2032-10-29 | 521 | 2080d | 0d |  |
| 524 | 1.22.5.1.4 | 三轴加固施工 | 40d | 2032-10-30 | 2032-12-08 | 523 | 2080d | 0d |  |
| 525 | 1.22.5.2 | **9-2区土方开挖施工** | 74d | 2032-12-09 | 2033-02-20 |  | 2080d |  |  |
| 526 | 1.22.5.2.1 | 降水施工 | 7d | 2032-12-09 | 2032-12-15 | 524 | 2080d | 0d |  |
| 527 | 1.22.5.2.2 | 首层土方及第一道混凝土支撑 | 18d | 2032-12-16 | 2033-01-02 | 526 | 2080d | 0d |  |
| 528 | 1.22.5.2.3 | 第二层土方开挖 | 4d | 2033-01-03 | 2033-01-06 | 527 | 2080d | 0d |  |
| 529 | 1.22.5.2.4 | 第二道钢支撑施工 | 4d | 2033-01-07 | 2033-01-10 | 528 | 2080d | 0d |  |
| 530 | 1.22.5.2.5 | 第三层土方开挖 | 4d | 2033-01-11 | 2033-01-14 | 529 | 2080d | 0d |  |
| 531 | 1.22.5.2.6 | 第三道钢支撑施工 | 4d | 2033-01-15 | 2033-01-18 | 530 | 2080d | 0d |  |
| 532 | 1.22.5.2.7 | 第四层土方开挖 | 4d | 2033-01-19 | 2033-01-22 | 531 | 2080d | 0d |  |
| 533 | 1.22.5.2.8 | 第四道钢支撑施工 | 4d | 2033-01-23 | 2033-01-26 | 532 | 2080d | 0d |  |
| 534 | 1.22.5.2.9 | 第五层土方开挖 | 5d | 2033-01-27 | 2033-01-31 | 533 | 2080d | 0d |  |
| 535 | 1.22.5.2.10 | 垫层及底板施工 | 20d | 2033-02-01 | 2033-02-20 | 534 | 2080d | 0d |  |
| 536 | 1.22.5.3 | **9-2区结构施工** | 98d | 2033-02-21 | 2033-05-29 |  | 2080d |  |  |
| 537 | 1.22.5.3.1 | 拆除第四道撑 | 3d | 2033-02-21 | 2033-02-23 | 535 | 2080d | 0d |  |
| 538 | 1.22.5.3.2 | 施工侧墙至第三道支撑底，施工钢换撑 | 20d | 2033-02-24 | 2033-03-15 | 537 | 2080d | 0d |  |
| 539 | 1.22.5.3.3 | 拆除第三道支撑，并施工侧墙及中板 | 20d | 2033-03-16 | 2033-04-04 | 538 | 2080d | 0d |  |
| 540 | 1.22.5.3.4 | 拆除钢换撑，并施工侧墙至第二道支撑底，拆除第二道支撑 | 25d | 2033-04-05 | 2033-04-29 | 539 | 2080d | 0d |  |
| 541 | 1.22.5.3.5 | 施工剩余侧墙及顶板，待强度达到设计强度后拆除第一道支撑，并覆土至地面 | 30d | 2033-04-30 | 2033-05-29 | 540 | 2080d |  |  |
